# iTRAAC v2

How a schedule from MS Project changed from version to version. A marks actual dates.

## Version 1 (saved 2009-04-21, file iTRAAC v2 Project Plan - original (save!!!).mpp)

| ID | WBS | Task | Duration | Start | Finish | Predecessors | Total float |
| --- | --- | --- | --- | --- | --- | --- | --- |
| 1 | 1 | **iTRAAC v2 - Phase 1** | 318d? | 2009-04-14 | 2010-07-01 |  | 0d |
| 2 |  | Initial Project Plan | 5d | 2009-04-14 | 2009-04-20 |  | 0d |
| 3 | 1.2 | **Analysis** | 20d? | 2009-04-21 | 2009-05-18 | 2 | 0d |
| 4 | 1.2.1 | **Requirements gathering** | 12d? | 2009-04-21 | 2009-05-06 |  | 0d |
| 5 |  | Requirements Gap Analysis (v1 to v2) | 5d | 2009-04-21 | 2009-04-27 |  | 0d |
| 6 |  | Separate raw requirements into business vs. technical | 1d? | 2009-04-28 | 2009-04-28 | 5 | 0d |
| 7 |  | Perform initial requirements prioritization | 1d? | 2009-04-29 | 2009-04-29 | 6 | 0d |
| 8 | 1.2.1.4 | **[*Deliverable] Requirements Document** | 5d | 2009-04-30 | 2009-05-06 | 7 | 0d |
| 9 |  | Incorporate changes based on feedback and resubmit until approved | 5d | 2009-04-30 | 2009-05-06 |  | 0d |
| 10 | 1.2.2 | **[*Deliverable] Use cases (e.g. Create New User, Sell New VAT Forms Package)** | 6d | 2009-05-07 | 2009-05-14 | 4 | 0d |
| 11 |  | [Deliverable – Del] Example use case diagrams for reference | 1d | 2009-05-07 | 2009-05-07 |  | 0d |
| 12 |  | Map business requirements into “Happy Path” style use cases (see Glossary) such that every major business requirement will be covered | 5d | 2009-05-08 | 2009-05-14 | 11 | 0d |
| 13 | 1.2.3 | **[*Deliverable] Statement of Scope** | 2d | 2009-05-15 | 2009-05-18 | 10 | 0d |
| 14 |  | Phase 1 - German VAT Forms | 2d | 2009-05-15 | 2009-05-18 |  | 0d |
| 15 |  | Phase 2 - European VAT Forms | 0d | 2009-05-18 | 2009-05-18 | 14 | 0d |
| 16 |  | Phase “x” - UTAP Support | 0d | 2009-05-18 | 2009-05-18 | 15 | 0d |
| 17 | 1.3 | **Design** | 62d? | 2009-05-19 | 2009-08-12 | 3 | 0d |
| 18 |  | [Deliverable - Bill McNeil and Del] Approved development architecture best practices document | 5d | 2009-05-19 | 2009-05-25 |  | 0d |
| 19 | 1.3.2 | **Establish application login/authentication approach** | 5d? | 2009-05-26 | 2009-06-01 | 18 | 0d |
| 20 |  | AD or STAMIS workstations? | 1d? | 2009-05-26 | 2009-05-26 |  | 0d |
| 21 |  | CAC sign in? | 1d? | 2009-05-27 | 2009-05-27 | 20 | 0d |
| 22 |  | Single sign on to iTRAAC application? | 1d? | 2009-05-28 | 2009-05-28 | 21 | 0d |
| 23 |  | Microsoft “trusted security” connection to the database | 1d? | 2009-05-29 | 2009-05-29 | 22 | 0d |
| 24 |  | Any non CAC login requirements? Air Force, etc. | 1d? | 2009-06-01 | 2009-06-01 | 23 | 0d |
| 25 |  | [*Deliverable] Chosen primary architectural components list (e.g. .Net Framework, SQL Server, Native SQL Server client driver, etc.) | 2d | 2009-06-02 | 2009-06-03 | 19 | 0d |
| 26 |  | [Deliverable] (Excel) matrix mapping use cases to functional units. E.g. the screens, reports, major subroutines & stored procedures that support each use case. Typically functional units are combined and re-used among more than one use case. | 5d | 2009-06-04 | 2009-06-10 | 25 | 0d |
| 27 |  | [*Deliverable] Initial prioritized list of functional units (ongoing, see development section below) | 10d | 2009-06-11 | 2009-06-24 | 26 | 0d |
| 28 |  | [*Deliverable] Wireframes of primary screens & reports with clarifying side notes where needed | 15d | 2009-06-25 | 2009-07-15 | 27 | 0d |
| 29 |  | Establish required level of built in application help (e.g. full blown context sensitive? Just key screenshots explained?) | 2d | 2009-07-16 | 2009-07-17 | 28 | 0d |
| 30 | 1.3.8 | **[Deliverable] Physical relational data model** | 10d? | 2009-07-20 | 2009-07-31 | 29 | 0d |
| 31 |  | TBD work | 5d | 2009-07-20 | 2009-07-24 |  | 0d |
| 32 |  | revamping the audit log design | 3d | 2009-07-27 | 2009-07-29 | 31 | 0d |
| 33 | 1.3.8.3 | **revamping the status flag design** | 2d? | 2009-07-30 | 2009-07-31 | 32 | 0d |
| 34 |  | Forms status | 1d? | 2009-07-30 | 2009-07-30 |  | 0d |
| 35 |  | Customer status | 1d | 2009-07-31 | 2009-07-31 | 34 | 0d |
| 36 |  | Determine feasibility of running production pilot in parallel | 3d | 2009-08-03 | 2009-08-05 | 30 | 0d |
| 37 |  | [*Deliverable] Development Project Plan – Gantt chart of the WBS (Work Breakdown Structure of the primary application components) | 5d | 2009-08-06 | 2009-08-12 | 19, 36 | 0d |
| 38 | 1.4 | **Development** | 102d? | 2009-08-13 | 2010-01-01 | 17 | 0d |
| 39 |  | Purchase DEV environment hardware and software | 1d | 2009-08-13 | 2009-08-13 |  | 0d |
| 40 | 1.4.2 | **Stand up DEV environment at most appropriate location** | 5d | 2009-08-14 | 2009-08-20 | 39 | 0d |
| 41 |  | Is there a 5thSignal requirement for development to be physically detached from NIPRNET until final version has been officially approved? If so, co-location of the dev workstation and server becomes a physical constraint | 5d | 2009-08-14 | 2009-08-20 |  | 0d |
| 42 |  | Establish version control/change management system – e.g. Visual Source Safe | 1d? | 2009-08-21 | 2009-08-21 | 40 | 0d |
| 43 |  | Establish automated build script | 1d? | 2009-08-24 | 2009-08-24 | 42 | 0d |
| 44 |  | Establish new build notification distro list and deployment location (i.e. where everyone can readily find a current build to kick the tires whenever they have time) | 1d? | 2009-08-25 | 2009-08-25 | 43 | 0d |
| 45 |  | Establish SharePoint workspace for project communication – living prioritized functional unit list, status reports, deliverables, build links, etc. | 1d | 2009-08-26 | 2009-08-26 | 44 | 0d |
| 46 | 1.4.7 | **WBS** | 92d? | 2009-08-27 | 2010-01-01 | 45 | 0d |
| 47 | 1.4.7.1 | **[*Deliverable] Application visual “shell”** | 10d? | 2009-08-27 | 2009-09-09 |  | 0d |
| 48 |  | Overall visual layout structure | 8d | 2009-08-27 | 2009-09-07 |  | 0d |
| 49 |  | Primary navigation elements (menus, nav bars, etc.) | 1d? | 2009-09-08 | 2009-09-08 | 48 | 0d |
| 50 |  | Standardized icons | 1d? | 2009-09-09 | 2009-09-09 | 49 | 0d |
| 51 | 1.4.7.2 | **Security model** | 14d? | 2009-09-10 | 2009-09-29 | 47 | 0d |
| 52 |  | Implement accredited security mechanisms | 10d | 2009-09-10 | 2009-09-23 | 24 | 0d |
| 53 |  | Client to SQL Server network encryption | 1d? | 2009-09-24 | 2009-09-24 | 19, 52 | 0d |
| 54 |  | SQL Server data encryption | 3d | 2009-09-25 | 2009-09-29 | 53 | 0d |
| 55 | 1.4.7.3 | **Primary Workflow Screens** | 3d? | 2009-09-30 | 2009-10-02 | 51 | 0d |
| 56 |  | Sell new forms | 1d? | 2009-09-30 | 2009-09-30 |  | 0d |
| 57 |  | Rapid return forms | 1d? | 2009-10-01 | 2009-10-01 | 56 | 0d |
| 58 |  | Process & File returned forms | 1d? | 2009-10-02 | 2009-10-02 | 57 | 0d |
| 59 | 1.4.7.4 | **"List" Screens** | 5d | 2009-10-05 | 2009-10-09 | 55 | 0d |
| 60 |  | Customer search | 3d | 2009-10-05 | 2009-10-07 | 51 | 0d |
| 61 |  | Daily Activity - Primarily a "new forms" list | 2d | 2009-10-08 | 2009-10-09 | 60 | 0d |
| 62 | 1.4.7.5 | **Major business entity view/edit detail screens** | 14d? | 2009-10-12 | 2009-10-29 | 60, 59 | 0d |
| 63 | 1.4.7.5.1 | **User** | 2d? | 2009-10-12 | 2009-10-13 |  | 0d |
| 64 |  | Manager | 1d? | 2009-10-12 | 2009-10-12 |  | 0d |
| 65 |  | Agent | 1d? | 2009-10-13 | 2009-10-13 | 64 | 0d |
| 66 | 1.4.7.5.2 | **Customer** | 4d | 2009-10-14 | 2009-10-19 | 65 | 0d |
| 67 |  | Sponsor | 2d | 2009-10-14 | 2009-10-15 |  | 0d |
| 68 |  | Dependents - Spouse, children | 2d | 2009-10-16 | 2009-10-19 | 67 | 0d |
| 69 |  | Tax form | 3d | 2009-10-20 | 2009-10-22 | 67, 66 | 0d |
| 70 |  | Tax package | 1d | 2009-10-23 | 2009-10-23 | 69 | 0d |

| ID | WBS | Task | Duration | Start | Finish | Predecessors | Total float |
| --- | --- | --- | --- | --- | --- | --- | --- |
| 71 |  | VAT Office (POC, Address, etc.) | 1d? | 2009-10-26 | 2009-10-26 | 70 | 0d |
| 72 |  | Vendor | 1d? | 2009-10-27 | 2009-10-27 | 71 | 0d |
| 73 |  | Transaction Type | 1d? | 2009-10-28 | 2009-10-28 | 72 | 0d |
| 74 |  | Goods & Services | 1d? | 2009-10-29 | 2009-10-29 | 73 | 0d |
| 75 | 1.4.7.6 | **Settings Screens** | 6d? | 2009-10-30 | 2009-11-06 | 62 | 0d |
| 76 |  | Printer/Form configuration | 3d | 2009-10-30 | 2009-11-03 |  | 0d |
| 77 |  | User Prefs - e.g. default filters, shortcut buttons, etc. | 2d | 2009-11-04 | 2009-11-05 | 76 | 0d |
| 78 |  | Local office settings | 1d? | 2009-11-06 | 2009-11-06 | 77 | 0d |
| 79 |  | New Forms Layout & Printing Subsystem (anticipating Euro Forms in 26 languages) | 10d | 2009-11-09 | 2009-11-20 | 75 | 0d |
| 80 | 1.4.7.8 | **Reporting** | 20d? | 2009-11-23 | 2009-12-18 | 77, 79 | 0d |
| 81 |  | End of day | 3d | 2009-11-23 | 2009-11-25 |  | 0d |
| 82 |  | End of Year sales & counts by office | 2d | 2009-11-26 | 2009-11-27 | 81 | 0d |
| 83 |  | Issued/Outstanding/Voided Counts and $$ totals by Office/date range for German/Euro then by Priced/Unpriced | 10d | 2009-11-30 | 2009-12-11 | 82 | 0d |
| 84 |  | Customer count by office by status (barred, etc.) | 1d? | 2009-12-14 | 2009-12-14 | 83 | 0d |
| 85 | 1.4.7.8.5 | **Customs reports - Web Based, sortable, filterable and drill down to detail** | 4d? | 2009-12-15 | 2009-12-18 | 84 | 0d |
| 86 |  | vehicle | 1d? | 2009-12-15 | 2009-12-15 |  | 0d |
| 87 |  | firearms | 1d? | 2009-12-16 | 2009-12-16 | 86 | 0d |
| 88 |  | >10 forms in 60 days | 1d | 2009-12-17 | 2009-12-17 | 87 | 0d |
| 89 |  | >2000€ in month | 1d | 2009-12-18 | 2009-12-18 | 88 | 0d |
| 90 |  | Application help | 10d | 2009-12-21 | 2010-01-01 | 80 | 0d |
| 91 | 1.5 | **IA Certification & Accreditation** | 30d | 2010-01-04 | 2010-02-12 | 38 | 0d |
| 92 |  | Documentation | 10d | 2010-01-04 | 2010-01-15 |  | 0d |
| 93 |  | Accreditation Submission Process | 10d | 2010-01-18 | 2010-01-29 | 92 | 0d |
| 94 |  | Application changes | 10d | 2010-02-01 | 2010-02-12 | 93 | 0d |
| 95 | 1.6 | **User Testing (Dev Environment)** | 25d? | 2010-02-15 | 2010-03-19 | 92, 91 | 0d |
| 96 |  | Cyclic process of testing and further development - Testing feedback will be actively incorporated into work products; e.g. bug fixes, functional enhancements, test plan modifications, etc. - resulting in ongoing reprioritization of functional unit implem | 15d | 2010-02-15 | 2010-03-05 |  | 0d |
| 97 | 1.6.2 | **Test Plans** | 6d? | 2010-03-08 | 2010-03-15 | 96 | 0d |
| 98 |  | Generally correspond to use cases | 1d? | 2010-03-08 | 2010-03-08 |  | 0d |
| 99 |  | [*Deliverable] Develop initial test plans - Important Note: Tasking the builder as the primary test plan contributor is not optimal due to developer “tunnel vision”. Therefore, test plan input should primarily come from the appropriate stakeholders (Bus | 5d | 2010-03-09 | 2010-03-15 | 98 | 0d |
| 100 |  | Establish short list of savvy VAT clerks and other key players that will test partially functional builds on a regular ongoing basis | 1d? | 2010-03-16 | 2010-03-16 | 97 | 0d |
| 101 |  | [Deliverable] Status Reports - detailing user acceptance, notable feedback and changes | 3d | 2010-03-17 | 2010-03-19 | 100 | 0d |
| 102 | 1.7 | **Develop Training Materials** | 26d? | 2010-03-22 | 2010-04-26 | 95 | 0d |
| 103 |  | [Deliverable] PowerPoint screen-shot walk through of the primary “happy path” use cases | 5d | 2010-03-22 | 2010-03-26 |  | 0d |
| 104 |  | Establish training manual and courseware provider | 1d? | 2010-03-29 | 2010-03-29 | 103 | 0d |
| 105 |  | [*Deliverable] Training manual and courseware | 20d | 2010-03-30 | 2010-04-26 | 104 | 0d |
| 106 | 1.8 | **Pilot (Production Environment)** | 22d | 2010-04-27 | 2010-05-26 | 102 | 0d |
| 107 |  | Stand up parallel production pilot environment | 3d | 2010-04-27 | 2010-04-29 |  | 0d |
| 108 |  | Select 1-3 desirable locations for running stable production V2 builds in parallel with V1 | 1d | 2010-04-30 | 2010-04-30 | 107 | 0d |
| 109 |  | Allow time for feedback, minor changes in functionality and documentation | 15d | 2010-05-03 | 2010-05-21 | 108 | 0d |
| 110 |  | [Deliverable] Status Reports - detailing user acceptance, notable feedback and changes | 3d | 2010-05-24 | 2010-05-26 | 108, 109 | 0d |
| 111 | 1.9 | **Full Rollout** | 26d? | 2010-05-27 | 2010-07-01 | 106 | 0d |
| 112 |  | Determine physical location of training – on-site vs. centralized | 1d? | 2010-05-27 | 2010-05-27 |  | 0d |
| 113 |  | Schedule and conduct training with VAT clerks in stages | 10d? | 2010-05-28 | 2010-06-10 | 112 | 0d |
| 114 |  | Stage release to a few offices at a time to manage production support workload | 10d | 2010-06-11 | 2010-06-24 | 113 | 0d |
| 115 |  | Plan for feedback and minimal changes; most feedback will go on a v2.”xyz” project plan list | 5d | 2010-06-25 | 2010-07-01 | 114 | 0d |

## Version 2 (saved 2010-09-10, file iTRAAC v2 Project Plan - original, too optimistic.mpp)

Last finish 2010-07-01 → 2012-02-02 (+581d).

Added:

| ID | Task | Duration | Start | Finish | Predecessors | Resources |
| --- | --- | --- | --- | --- | --- | --- |
| 2 | Implementing UTAP contract data entry web app | 120d | 2009-04-14 | 2009-09-28 |  |  |
| 3 | Waiting for development environment (software & VM) | 1d? | 2009-09-29 | 2009-09-29 | 2 |  |
| 21 | accredited security mechanisms | 1d? | 2009-11-05 | 2009-11-05 |  | Bill McNeil; Del |
| 41 | Vista upgrades to iTRAAC Garrison Servers | 30d | 2010-01-26 | 2010-03-08 | 19 | Brent |
| 42 | Kilbourne Datacenter Meltdown | 30d | 2010-03-09 | 2010-04-19 | 41 |  |
| 43 | Personal Training (WPF, Army Requirements) | 30d | 2010-04-20 | 2010-05-31 | 42 | Brent |
| 47 | Obtain & install DEV environment software | 5d | 2010-06-08 | 2010-06-14 | 46 | Melanie; Del |
| 58 | **Data Access** | 26d | 2010-08-10 A | 2010-09-14 | 54 | Brent |
| 59 | Business Object approach | 20d | 2010-08-10 A | 2010-09-06 |  | Brent |
| 60 | Modified, Load, Save | 20d | 2010-08-10 A | 2010-09-14 | 59 | Brent |
| 96 | Reporting framework | 5d | 2011-06-02 | 2011-06-08 |  |  |

Changed:

| ID | Task | Start | Finish | Duration | Complete | Total float | Predecessors | Other |
| --- | --- | --- | --- | --- | --- | --- | --- | --- |
| 1 | **iTRAAC v2 - Phase 1** | 2009-04-14 A | 2010-07-01 → 2012-02-02 (+581d) | 318d? → 733d? | 0% → 4% |  |  |  |
| 4 | Initial Project Plan | 2009-04-14 → 2009-10-01 (+170d) | 2009-04-20 → 2009-10-07 (+170d) |  |  | 0d → 20d | none → 3 | constraint none → start no earlier than 2009-10-01 |
| 5 | **Analysis** | 2009-04-21 → 2009-10-08 (+170d) | 2009-05-18 → 2009-11-04 (+170d) |  |  | 0d → 20d |  |  |
| 6 | **Requirements gathering** | 2009-04-21 → 2009-10-08 (+170d) | 2009-05-06 → 2009-10-23 (+170d) |  |  | 0d → 20d |  |  |
| 7 | Requirements Gap Analysis (v1 to v2) | 2009-04-21 → 2009-10-08 (+170d) | 2009-04-27 → 2009-10-14 (+170d) |  |  | 0d → 20d |  |  |
| 8 | Separate raw requirements into business vs. technical | 2009-04-28 → 2009-10-15 (+170d) | 2009-04-28 → 2009-10-15 (+170d) |  |  | 0d → 20d |  |  |
| 9 | Perform initial requirements prioritization | 2009-04-29 → 2009-10-16 (+170d) | 2009-04-29 → 2009-10-16 (+170d) |  |  | 0d → 20d |  |  |
| 10 | **[*Deliverable] Requirements Document** | 2009-04-30 → 2009-10-19 (+172d) | 2009-05-06 → 2009-10-23 (+170d) |  |  | 0d → 20d |  |  |
| 11 | Incorporate changes based on feedback and resubmit until approved | 2009-04-30 → 2009-10-19 (+172d) | 2009-05-06 → 2009-10-23 (+170d) |  |  | 0d → 20d |  |  |
| 12 | **[*Deliverable] Use cases (e.g. Create New User, Sell New VAT Forms Package)** | 2009-05-07 → 2009-10-26 (+172d) | 2009-05-14 → 2009-11-02 (+172d) |  |  | 0d → 20d |  |  |
| 13 | [Deliverable – Del] Example use case diagrams for reference | 2009-05-07 → 2009-10-26 (+172d) | 2009-05-07 → 2009-10-26 (+172d) |  |  | 0d → 20d |  |  |
| 14 | Map business requirements into “Happy Path” style use cases (see Glossary) such that every major business requirement will be covered | 2009-05-08 → 2009-10-27 (+172d) | 2009-05-14 → 2009-11-02 (+172d) |  |  | 0d → 20d |  |  |
| 15 | **[*Deliverable] Statement of Scope** | 2009-05-15 → 2009-11-03 (+172d) | 2009-05-18 → 2009-11-04 (+170d) |  |  | 0d → 20d |  |  |
| 16 | Phase 1 - German VAT Forms | 2009-05-15 → 2009-11-03 (+172d) | 2009-05-18 → 2009-11-04 (+170d) |  |  | 0d → 20d |  |  |
| 17 | Phase 2 - European VAT Forms | 2009-05-18 → 2009-11-04 (+170d) | 2009-05-18 → 2009-11-04 (+170d) |  |  | 0d → 20d |  |  |
| 18 | Phase “x” - UTAP Support | 2009-05-18 → 2009-11-04 (+170d) | 2009-05-18 → 2009-11-04 (+170d) |  |  | 0d → 20d |  |  |
| 19 | **Design** | 2009-05-19 → 2009-11-05 (+170d) | 2009-08-12 → 2010-01-25 (+166d) | 62d? → 58d? |  | 0d → 20d |  |  |
| 20 | **[Deliverable - Bill McNeil and Del] Approved development architecture best practices document** | 2009-05-19 → 2009-11-05 (+170d) | 2009-05-25 → 2009-11-05 (+164d) | 5d → 1d? |  | 0d → 20d |  | resources Bill McNeil → Bill McNeil; Del |
| 22 | **Establish application login/authentication approach** | 2009-05-26 → 2009-11-06 (+164d) | 2009-06-01 → 2009-11-12 (+164d) |  |  | 0d → 20d |  |  |
| 23 | AD or STAMIS workstations? | 2009-05-26 → 2009-11-06 (+164d) | 2009-05-26 → 2009-11-06 (+164d) |  |  | 0d → 20d |  |  |
| 24 | CAC sign in? | 2009-05-27 → 2009-11-09 (+166d) | 2009-05-27 → 2009-11-09 (+166d) |  |  | 0d → 20d |  |  |
| 25 | Single sign on to iTRAAC application? | 2009-05-28 → 2009-11-10 (+166d) | 2009-05-28 → 2009-11-10 (+166d) |  |  | 0d → 20d |  |  |
| 26 | Microsoft “trusted security” connection to the database | 2009-05-29 → 2009-11-11 (+166d) | 2009-05-29 → 2009-11-11 (+166d) |  |  | 0d → 20d |  |  |
| 27 | Any non CAC login requirements? Air Force, etc. | 2009-06-01 → 2009-11-12 (+164d) | 2009-06-01 → 2009-11-12 (+164d) |  |  | 0d → 20d |  |  |
| 28 | [*Deliverable] Chosen primary architectural components list (e.g. .Net Framework, SQL Server, Native SQL Server client driver, etc.) | 2009-06-02 → 2009-11-13 (+164d) | 2009-06-03 → 2009-11-16 (+166d) |  |  | 0d → 20d |  |  |
| 29 | [Deliverable] (Excel) matrix mapping use cases to functional units. E.g. the screens, reports, major subroutines & stored procedures that support each use case. Typically functional units are combined and re-used among more than one use case. | 2009-06-04 → 2009-11-17 (+166d) | 2009-06-10 → 2009-11-23 (+166d) |  |  | 0d → 20d |  |  |
| 30 | [*Deliverable] Initial prioritized list of functional units (ongoing, see development section below) | 2009-06-11 → 2009-11-24 (+166d) | 2009-06-24 → 2009-12-07 (+166d) |  |  | 0d → 20d |  |  |
| 31 | [*Deliverable] Wireframes of primary screens & reports with clarifying side notes where needed | 2009-06-25 → 2009-12-08 (+166d) | 2009-07-15 → 2009-12-28 (+166d) |  |  | 0d → 20d |  |  |
| 32 | Establish required level of built in application help (e.g. full blown context sensitive? Just key screenshots explained?) | 2009-07-16 → 2009-12-29 (+166d) | 2009-07-17 → 2009-12-30 (+166d) |  |  | 0d → 20d |  |  |
| 33 | **[Deliverable] Physical relational data model** | 2009-07-20 → 2009-12-31 (+164d) | 2009-07-31 → 2010-01-13 (+166d) |  |  | 0d → 20d |  |  |
| 34 | TBD work | 2009-07-20 → 2009-12-31 (+164d) | 2009-07-24 → 2010-01-06 (+166d) |  |  | 0d → 20d |  |  |
| 35 | revamping the audit log design | 2009-07-27 → 2010-01-07 (+164d) | 2009-07-29 → 2010-01-11 (+166d) |  |  | 0d → 20d |  |  |
| 36 | **revamping the status flag design** | 2009-07-30 → 2010-01-12 (+166d) | 2009-07-31 → 2010-01-13 (+166d) |  |  | 0d → 20d |  |  |
| 37 | Forms status | 2009-07-30 → 2010-01-12 (+166d) | 2009-07-30 → 2010-01-12 (+166d) |  |  | 0d → 20d |  |  |
| 38 | Customer status | 2009-07-31 → 2010-01-13 (+166d) | 2009-07-31 → 2010-01-13 (+166d) |  |  | 0d → 20d |  |  |
| 39 | Determine feasibility of running production pilot in parallel | 2009-08-03 → 2010-01-14 (+164d) | 2009-08-05 → 2010-01-18 (+166d) |  |  | 0d → 20d |  |  |
| 40 | [*Deliverable] Development Project Plan – Gantt chart of the WBS (Work Breakdown Structure of the primary application components) | 2009-08-06 → 2010-01-19 (+166d) | 2009-08-12 → 2010-01-25 (+166d) |  |  | 0d → 20d | 22, 39 → 39 |  |
| 44 | **Development** | 2009-08-13 → 2010-06-01 A (+292d) | 2010-01-01 → 2011-07-22 (+567d) | 102d? → 299d? | 0% → 9% |  | 19 → 43 |  |
| 45 | **Stand up DEV environment** | 2009-08-14 → 2010-06-01 (+291d) | 2009-08-20 → 2010-06-21 (+305d) | 5d → 15d |  | 0d → 20d | 46 → none | was named Stand up DEV environment at most appropriate location; resources Brent → ASP |
| 46 | Obtain & install DEV environment hardware | 2009-08-13 → 2010-06-01 (+292d) | 2009-08-13 → 2010-06-07 (+298d) | 1d → 5d |  | 0d → 20d |  | was named Purchase DEV environment hardware and software; resources Melanie → Melanie; Del |
| 48 | Is there a 5thSignal requirement for development to be physically detached from NIPRNET until final version has been officially approved? If so, co-location of the dev workstation and server becomes a physical constraint | 2009-08-14 → 2010-06-15 (+305d) | 2009-08-20 → 2010-06-21 (+305d) |  |  | 0d → 20d | none → 47 | resources none → Melanie; Del |
| 49 | Establish version control/change management system – e.g. Visual Source Safe | 2009-08-21 → 2010-06-22 (+305d) | 2009-08-21 → 2010-06-22 (+305d) |  |  | 0d → 20d |  |  |
| 50 | Establish automated build script | 2009-08-24 → 2010-06-23 (+303d) | 2009-08-24 → 2010-06-23 (+303d) |  |  | 0d → 20d |  |  |
| 51 | Establish new build notification distro list and deployment location (i.e. where everyone can readily find a current build to kick the tires whenever they have time) | 2009-08-25 → 2010-06-24 (+303d) | 2009-08-25 → 2010-06-24 (+303d) |  |  | 0d → 20d |  |  |
| 52 | Establish SharePoint workspace for project communication – living prioritized functional unit list, status reports, deliverables, build links, etc. | 2009-08-26 → 2010-06-25 (+303d) | 2009-08-26 → 2010-06-25 (+303d) |  |  | 0d → 20d |  |  |
| 53 | **WBS** | 2009-08-27 → 2010-06-28 A (+305d) | 2010-01-01 → 2011-07-22 (+567d) | 92d? → 280d? | 0% → 10% |  |  |  |
| 54 | **[*Deliverable] Application visual “shell”** | 2009-08-27 → 2010-06-28 (+305d) | 2009-09-09 → 2010-08-09 (+334d) | 10d? → 31d |  | 0d → 20d |  |  |
| 55 | Overall visual layout structure | 2009-08-27 → 2010-06-28 (+305d) | 2009-09-07 → 2010-07-16 (+312d) | 8d → 15d |  | 0d → 20d |  | resources none → Brent |
| 56 | Primary navigation elements (menus, nav bars, etc.) | 2009-09-08 → 2010-07-19 (+314d) | 2009-09-08 → 2010-08-06 (+332d) | 1d? → 15d |  | 0d → 20d |  | resources none → Brent |
| 57 | Standardized icons | 2009-09-09 → 2010-08-09 (+334d) | 2009-09-09 → 2010-08-09 (+334d) | 1d? → 1d |  | 0d → 20d |  | resources none → Brent |
| 61 | **Security model** | 2009-09-10 → 2010-09-15 (+370d) | 2009-09-29 → 2010-10-04 (+370d) |  |  |  | 54 → 58 |  |
| 62 | Implement accredited security mechanisms | 2009-09-10 → 2010-09-15 (+370d) | 2009-09-23 → 2010-09-28 (+370d) |  |  |  |  |  |
| 63 | Client to SQL Server network encryption | 2009-09-24 → 2010-09-29 (+370d) | 2009-09-24 → 2010-09-29 (+370d) |  |  |  |  | resources none → Brent |
| 64 | SQL Server host data encryption | 2009-09-25 → 2010-09-30 (+370d) | 2009-09-29 → 2010-10-04 (+370d) |  |  |  |  | was named SQL Server data encryption; resources none → Brent |
| 65 | **Primary Workflow Screens** | 2009-09-30 → 2010-10-05 (+370d) | 2009-10-02 → 2010-10-21 (+384d) | 3d? → 13d |  |  |  |  |
| 66 | Sell new forms | 2009-09-30 → 2010-10-05 (+370d) | 2009-09-30 → 2010-10-07 (+372d) | 1d? → 3d |  |  |  |  |
| 67 | Rapid return forms | 2009-10-01 → 2010-10-08 (+372d) | 2009-10-01 → 2010-10-14 (+378d) | 1d? → 5d |  |  |  |  |
| 68 | Process & File returned forms | 2009-10-02 → 2010-10-15 (+378d) | 2009-10-02 → 2010-10-21 (+384d) | 1d? → 5d |  |  |  |  |
| 69 | **"List" Screens** | 2009-10-05 → 2010-10-22 (+382d) | 2009-10-09 → 2010-11-09 (+396d) | 5d → 13d |  |  |  |  |
| 70 | Customer search | 2009-10-05 → 2010-10-22 (+382d) | 2009-10-07 → 2010-11-04 (+393d) | 3d → 10d |  |  | 61 → none | resources none → Brent |
| 71 | Daily Activity - Primarily a "new forms" list | 2009-10-08 → 2010-11-05 (+393d) | 2009-10-09 → 2010-11-09 (+396d) | 2d → 3d |  |  |  |  |
| 72 | **Major business entity view/edit detail screens** | 2009-10-12 → 2010-11-10 (+394d) | 2009-10-29 → 2011-02-24 (+483d) | 14d? → 77d? |  |  | 70, 69 → 69 |  |
| 73 | **User** | 2009-10-12 → 2010-11-10 (+394d) | 2009-10-13 → 2010-11-17 (+400d) | 2d? → 6d |  |  |  |  |
| 74 | Manager | 2009-10-12 → 2010-11-10 (+394d) | 2009-10-12 → 2010-11-12 (+396d) | 1d? → 3d |  |  |  | resources none → Brent |
| 75 | Agent | 2009-10-13 → 2010-11-15 (+398d) | 2009-10-13 → 2010-11-17 (+400d) | 1d? → 3d |  |  |  | resources none → Brent |
| 76 | **Customer** | 2009-10-14 → 2010-11-18 (+400d) | 2009-10-19 → 2010-12-10 (+417d) | 4d → 17d |  |  | 75 → 73 |  |
| 77 | Sponsor | 2009-10-14 → 2010-11-18 (+400d) | 2009-10-15 → 2010-12-08 (+419d) | 2d → 15d |  |  |  |  |
| 78 | Dependents - Spouse, children | 2009-10-16 → 2010-12-09 (+419d) | 2009-10-19 → 2010-12-10 (+417d) |  |  |  |  |  |
| 79 | Tax form | 2009-10-20 → 2010-12-13 (+419d) | 2009-10-22 → 2011-01-21 (+456d) | 3d → 30d |  |  | 77, 76 → 76 | resources none → Brent |
| 80 | Tax package | 2009-10-23 → 2011-01-24 (+458d) | 2009-10-23 → 2011-01-24 (+458d) |  |  |  |  | resources none → Brent |

| ID | Task | Start | Finish | Duration | Predecessors | Other |
| --- | --- | --- | --- | --- | --- | --- |
| 81 | VAT Office (POC, Address, etc.) | 2009-10-26 → 2011-01-25 (+456d) | 2009-10-26 → 2011-01-31 (+462d) | 1d? → 5d |  | resources none → Brent |
| 82 | Vendor | 2009-10-27 → 2011-02-01 (+462d) | 2009-10-27 → 2011-02-21 (+482d) | 1d? → 15d |  | resources none → Brent |
| 83 | Transaction Type | 2009-10-28 → 2011-02-22 (+482d) | 2009-10-28 → 2011-02-22 (+482d) |  |  |  |
| 84 | Goods & Services | 2009-10-29 → 2011-02-23 (+482d) | 2009-10-29 → 2011-02-24 (+483d) | 1d? → 2d |  | resources none → Brent |
| 85 | **Settings Screens** | 2009-10-30 → 2011-02-25 (+483d) | 2009-11-06 → 2011-03-18 (+497d) | 6d? → 16d |  |  |
| 86 | Printer/Form configuration | 2009-10-30 → 2011-02-25 (+483d) | 2009-11-03 → 2011-03-01 (+483d) |  |  |  |
| 87 | User Prefs - e.g. default filters, shortcut buttons, etc. | 2009-11-04 → 2011-03-02 (+483d) | 2009-11-05 → 2011-03-15 (+495d) | 2d → 10d |  |  |
| 88 | Local office settings | 2009-11-06 → 2011-03-16 (+495d) | 2009-11-06 → 2011-03-18 (+497d) | 1d? → 3d |  |  |
| 89 | New Forms Layout & Printing Subsystem (anticipating Euro Forms in 26 languages) | 2009-11-09 → 2011-03-21 (+497d) | 2009-11-20 → 2011-04-29 (+525d) | 10d → 30d |  |  |
| 90 | **Reporting** | 2009-11-23 → 2011-05-02 (+525d) | 2009-12-18 → 2011-06-24 (+553d) | 20d? → 40d | 87, 89 → 89 |  |
| 91 | End of day | 2009-11-23 → 2011-05-02 (+525d) | 2009-11-25 → 2011-05-06 (+527d) | 3d → 5d |  | resources none → Brent |
| 92 | End of Year sales & counts by office | 2009-11-26 → 2011-05-09 (+529d) | 2009-11-27 → 2011-05-13 (+532d) | 2d → 5d |  |  |
| 93 | Issued/Outstanding/Voided Counts and $$ totals by Office/date range for German/Euro then by Priced/Unpriced | 2009-11-30 → 2011-05-16 (+532d) | 2009-12-11 → 2011-05-27 (+532d) |  |  |  |
| 94 | Customer count by office by status (barred, etc.) | 2009-12-14 → 2011-05-30 (+532d) | 2009-12-14 → 2011-06-01 (+534d) | 1d? → 3d |  |  |
| 95 | **Customs reports - Web Based, sortable, filterable and drill down to detail** | 2009-12-15 → 2011-06-02 (+534d) | 2009-12-18 → 2011-06-24 (+553d) | 4d? → 17d |  |  |
| 97 | vehicle | 2009-12-15 → 2011-06-09 (+541d) | 2009-12-15 → 2011-06-13 (+545d) | 1d? → 3d | none → 96 |  |
| 98 | firearms | 2009-12-16 → 2011-06-14 (+545d) | 2009-12-16 → 2011-06-16 (+547d) | 1d? → 3d |  |  |
| 99 | >10 forms in 60 days | 2009-12-17 → 2011-06-17 (+547d) | 2009-12-17 → 2011-06-21 (+551d) | 1d → 3d |  |  |
| 100 | >2000€ in month | 2009-12-18 → 2011-06-22 (+551d) | 2009-12-18 → 2011-06-24 (+553d) | 1d → 3d |  |  |
| 101 | Application help | 2009-12-21 → 2011-06-27 (+553d) | 2010-01-01 → 2011-07-22 (+567d) | 10d → 20d |  | resources none → TBD |
| 102 | **IA Certification & Accreditation** | 2010-01-04 → 2011-07-25 (+567d) | 2010-02-12 → 2011-09-16 (+581d) | 30d → 40d |  | resources none → Brent; Del |
| 103 | Documentation | 2010-01-04 → 2011-07-25 (+567d) | 2010-01-15 → 2011-08-05 (+567d) |  |  | resources none → Brent; Del |
| 104 | Accreditation Submission Process | 2010-01-18 → 2011-08-08 (+567d) | 2010-01-29 → 2011-08-19 (+567d) |  |  | resources none → Brent; Del |
| 105 | Application changes | 2010-02-01 → 2011-08-22 (+567d) | 2010-02-12 → 2011-09-16 (+581d) | 10d → 20d |  | resources none → Brent |
| 106 | **User Testing (Dev Environment)** | 2010-02-15 → 2011-09-19 (+581d) | 2010-03-19 → 2011-10-21 (+581d) |  | 103, 102 → 102 |  |
| 107 | Cyclic process of testing and further development - Testing feedback will be actively incorporated into work products; e.g. bug fixes, functional enhancements, test plan modifications, etc. - resulting in ongoing reprioritization of functional unit implem | 2010-02-15 → 2011-09-19 (+581d) | 2010-03-05 → 2011-10-07 (+581d) |  |  |  |
| 108 | **Test Plans** | 2010-03-08 → 2011-10-10 (+581d) | 2010-03-15 → 2011-10-17 (+581d) |  |  |  |
| 109 | Generally correspond to use cases | 2010-03-08 → 2011-10-10 (+581d) | 2010-03-08 → 2011-10-10 (+581d) |  |  |  |
| 110 | [*Deliverable] Develop initial test plans - Important Note: Tasking the builder as the primary test plan contributor is not optimal due to developer “tunnel vision”. Therefore, test plan input should primarily come from the appropriate stakeholders (Bus | 2010-03-09 → 2011-10-11 (+581d) | 2010-03-15 → 2011-10-17 (+581d) |  |  |  |
| 111 | Establish short list of savvy VAT clerks and other key players that will test partially functional builds on a regular ongoing basis | 2010-03-16 → 2011-10-18 (+581d) | 2010-03-16 → 2011-10-18 (+581d) |  |  |  |
| 112 | [Deliverable] Status Reports - detailing user acceptance, notable feedback and changes | 2010-03-17 → 2011-10-19 (+581d) | 2010-03-19 → 2011-10-21 (+581d) |  |  |  |
| 113 | **Develop Training Materials** | 2010-03-22 → 2011-10-24 (+581d) | 2010-04-26 → 2011-11-28 (+581d) |  |  |  |
| 114 | [Deliverable] PowerPoint screen-shot walk through of the primary “happy path” use cases | 2010-03-22 → 2011-10-24 (+581d) | 2010-03-26 → 2011-10-28 (+581d) |  |  |  |
| 115 | Establish training manual and courseware provider | 2010-03-29 → 2011-10-31 (+581d) | 2010-03-29 → 2011-10-31 (+581d) |  |  |  |
| 116 | [*Deliverable] Training manual and courseware | 2010-03-30 → 2011-11-01 (+581d) | 2010-04-26 → 2011-11-28 (+581d) |  |  |  |
| 117 | **Pilot (Production Environment)** | 2010-04-27 → 2011-11-29 (+581d) | 2010-05-26 → 2011-12-28 (+581d) |  |  |  |
| 118 | Stand up parallel production pilot environment | 2010-04-27 → 2011-11-29 (+581d) | 2010-04-29 → 2011-12-01 (+581d) |  |  |  |
| 119 | Select 1-3 desirable locations for running stable production V2 builds in parallel with V1 | 2010-04-30 → 2011-12-02 (+581d) | 2010-04-30 → 2011-12-02 (+581d) |  |  |  |
| 120 | Allow time for feedback, minor changes in functionality and documentation | 2010-05-03 → 2011-12-05 (+581d) | 2010-05-21 → 2011-12-23 (+581d) |  |  |  |
| 121 | [Deliverable] Status Reports - detailing user acceptance, notable feedback and changes | 2010-05-24 → 2011-12-26 (+581d) | 2010-05-26 → 2011-12-28 (+581d) |  | 119, 120 → 120 |  |
| 122 | **Full Rollout** | 2010-05-27 → 2011-12-29 (+581d) | 2010-07-01 → 2012-02-02 (+581d) |  |  |  |
| 123 | Determine physical location of training – on-site vs. centralized | 2010-05-27 → 2011-12-29 (+581d) | 2010-05-27 → 2011-12-29 (+581d) |  |  |  |
| 124 | Schedule and conduct training with VAT clerks in stages | 2010-05-28 → 2011-12-30 (+581d) | 2010-06-10 → 2012-01-12 (+581d) |  |  |  |
| 125 | Stage release to a few offices at a time to manage production support workload | 2010-06-11 → 2012-01-13 (+581d) | 2010-06-24 → 2012-01-26 (+581d) |  |  |  |
| 126 | Plan for feedback and minimal changes; most feedback will go on a v2.”xyz” project plan list | 2010-06-25 → 2012-01-27 (+581d) | 2010-07-01 → 2012-02-02 (+581d) |  |  |  |
